Schedule from MS Project, 2020-10-15 to 2023-07-13, costs in $, A marks actual dates.

## Calendars

- Standard: Mon-Fri 08:00-12:00, 13:00-17:00; Sat-Sun off.

## Resources

| Resource | Rate |
| --- | --- |
| Architecture Engineer 1 | 60 |
| Architecture Engineer 2 | 60 |
| Backend Developer 1 | 55 |
| Backend Developer 2 | 55 |
| Backend Developer 3 | 55 |
| Backend Developer 4 | 55 |
| Backend Development Lead | 65 |
| Business Analyst | 60 |
| Database Developement Lead | 80 |
| Deployment Developer 1 | 55 |
| Deployment Developer 2 | 55 |
| Deployment Developer 3 | 55 |
| Deployment Developer 4 | 55 |
| Deployment Engineer Lead | 60 |
| Design Engineer | 60 |
| Frontend Developer 1 | 60 |
| Frontend Developer 2 | 60 |
| Frontend Developer 3 | 60 |
| Frontend Developer 4 | 60 |
| Frontend Development Lead | 70 |
| IT Manager | 80 |
| Project Manager 1 | 100 |
| Project Sponsor/Manager 2 | 90 |
| Requirements Engineer 1 | 50 |
| Requirements Engineer 2 | 50 |
| Requirements Engineer 3 | 50 |
| Requirements Engineer 4 | 50 |
| Security Engineer 1 | 50 |
| Security Engineer 2 | 50 |
| Security Engineer 3 | 50 |
| Security Engineer 4 | 50 |
| Security Engineer Lead | 60 |
| Testing Engineer 1 | 50 |
| Testing Engineer 2 | 50 |
| Testing Engineer 3 | 50 |
| Testing Engineer 4 | 50 |
| Testing Engineer Lead | 60 |
| Architecture Engineer Lead | 80 |
| Database Development Engineer 1 | 60 |
| Database Development Engineer 2 | 60 |
| Technical Director | 70 |

## Schedule

| ID | WBS | Task | Duration | Start | Finish | Predecessors | Complete | Remaining | Total slack | Constraint | Resources | Work | Actual work | Cost | Actual cost |
| --- | --- | --- | --- | --- | --- | --- | --- | --- | --- | --- | --- | --- | --- | --- | --- |
| 1 | 1 | **Start** | 716d | 2020-10-15 A | 2023-07-13 |  | 77% | 162.01d | 0d |  |  | 35278.7h | 29536h | 2,314,920 | 1,922,240 |
| 2 | 1.1 | Project manager activities | 716d | 2020-10-15 A | 2023-07-13 |  | 75% | 179d | 0d | finish no earlier than 2023-07-13 | Project Manager 1 | 5728h | 4296h | 572,800 | 429,600 |
| 3 | 1.2 | Create project charter | 11d | 2020-10-15 A | 2020-10-29 A |  | 100% |  |  |  | Project Sponsor/Manager 2; Business Analyst | 88h | 88h | 7,920 | 7,920 |
| 4 | 1.3 | Agreement with Sponsor/stakeholders | 1d | 2020-10-30 A | 2020-10-30 A | 3 | 100% |  |  |  | Project Sponsor/Manager 2; Business Analyst | 16h | 16h | 1,200 | 1,200 |
| 5 | 1.4 | Create Stakeholder Plan | 3d | 2020-11-02 A | 2020-11-04 A | 4 | 100% |  |  |  | Business Analyst; Project Sponsor/Manager 2 | 48h | 48h | 3,600 | 3,600 |
| 6 | 1.5 | Create Governance Plan | 4d | 2020-11-05 A | 2020-11-10 A | 5 | 100% |  |  |  | Project Sponsor/Manager 2; Business Analyst | 64h | 64h | 4,800 | 4,800 |
| 7 | 1.6 | **Requirements** | 54d | 2020-11-11 A | 2021-01-25 A |  | 100% |  |  |  |  | 1728h | 1728h | 86,400 | 86,400 |
| 8 | 1.6.1 | Collect Requirements | 2d | 2020-11-11 A | 2020-11-12 A | 6 | 100% |  |  |  | Requirements Engineer 1; Requirements Engineer 2; Requirements Engineer 3; Requirements Engineer 4 | 64h | 64h | 3,200 | 3,200 |
| 9 | 1.6.2 | Create Worksheet | 3d | 2020-11-13 A | 2020-11-17 A | 8 | 100% |  |  |  | Requirements Engineer 1; Requirements Engineer 2; Requirements Engineer 3; Requirements Engineer 4 | 96h | 96h | 4,800 | 4,800 |
| 10 | 1.6.3 | Architecture Workshop | 14d | 2020-11-18 A | 2020-12-07 A | 9 | 100% |  |  |  | Requirements Engineer 1; Requirements Engineer 2; Requirements Engineer 3; Requirements Engineer 4 | 448h | 448h | 22,400 | 22,400 |
| 11 | 1.6.4 | Frontend Workshop | 10d | 2020-12-08 A | 2020-12-21 A | 10 | 100% |  |  |  | Requirements Engineer 1; Requirements Engineer 2; Requirements Engineer 3; Requirements Engineer 4 | 320h | 320h | 16,000 | 16,000 |
| 12 | 1.6.5 | Backend Workshop | 14d | 2020-12-22 A | 2021-01-08 A | 11 | 100% |  |  |  | Requirements Engineer 1; Requirements Engineer 2; Requirements Engineer 3; Requirements Engineer 4 | 448h | 448h | 22,400 | 22,400 |
| 13 | 1.6.6 | Create Requirements Draft | 2d | 2021-01-11 A | 2021-01-12 A | 12 | 100% |  |  |  | Requirements Engineer 1; Requirements Engineer 2; Requirements Engineer 3; Requirements Engineer 4 | 64h | 64h | 3,200 | 3,200 |
| 14 | 1.6.7 | Review Requirements Document | 1d | 2021-01-13 A | 2021-01-13 A | 13 | 100% |  |  |  | Requirements Engineer 1; Requirements Engineer 2; Requirements Engineer 3; Requirements Engineer 4 | 32h | 32h | 1,600 | 1,600 |
| 15 | 1.6.8 | Update Requirements Document | 2d | 2021-01-14 A | 2021-01-15 A | 14 | 100% |  |  |  | Requirements Engineer 1; Requirements Engineer 2; Requirements Engineer 3; Requirements Engineer 4 | 64h | 64h | 3,200 | 3,200 |
| 16 | 1.6.9 | Review Requirements with Sponsor | 1d | 2021-01-18 A | 2021-01-18 A | 15 | 100% |  |  |  | Requirements Engineer 1; Requirements Engineer 2; Requirements Engineer 3; Requirements Engineer 4 | 32h | 32h | 1,600 | 1,600 |
| 17 | 1.6.10 | Develop Project Schedule | 3d | 2021-01-19 A | 2021-01-21 A | 16 | 100% |  |  |  | Requirements Engineer 1; Requirements Engineer 2; Requirements Engineer 3; Requirements Engineer 4 | 96h | 96h | 4,800 | 4,800 |
| 18 | 1.6.11 | Determine Budget | 1d | 2021-01-22 A | 2021-01-22 A | 17 | 100% |  |  |  | Requirements Engineer 1; Requirements Engineer 2; Requirements Engineer 3; Requirements Engineer 4 | 32h | 32h | 1,600 | 1,600 |
| 19 | 1.6.12 | Milestone: Requirements Document Signed | 1d | 2021-01-25 A | 2021-01-25 A | 18 | 100% |  |  |  | Requirements Engineer 1; Requirements Engineer 2; Requirements Engineer 3; Requirements Engineer 4 | 32h | 32h | 1,600 | 1,600 |
| 20 | 1.7 | **Design** | 79d | 2021-01-25 A | 2021-05-14 A |  | 100% |  |  |  |  | 2488h | 2488h | 161,360 | 161,360 |
| 21 | 1.7.1 | Initial design meeting - evaluate the SRS (Software Requirements Specification) and analyze the problem | 1d | 2021-01-25 A | 2021-01-26 A | 19 | 100% |  |  |  | Architecture Engineer 1; Architecture Engineer 2; Design Engineer; Architecture Engineer Lead; IT Manager | 32h | 32h | 2,080 | 2,080 |
| 22 | 1.7.2 | **Generate the system interface** | 21d | 2021-01-27 A | 2021-02-24 A |  | 100% |  |  |  | Design Engineer; Architecture Engineer 1; Architecture Engineer 2; Architecture Engineer Lead; IT Manager | 672h | 672h | 43,680 | 43,680 |
| 23 | 1.7.2.1 | Generate description of events in the environment or messages from agents to which the system must respond | 7d | 2021-01-27 A | 2021-02-04 A | 21 | 100% |  |  |  | Design Engineer; Architecture Engineer 1; Architecture Engineer 2; Architecture Engineer Lead | 224h | 224h | 14,560 | 14,560 |
| 24 | 1.7.2.2 | Generate description of events in the environment or messages from agents to which the system must respond | 3d | 2021-02-05 A | 2021-02-09 A | 23 | 100% |  |  |  | Architecture Engineer 1; Architecture Engineer 2; Design Engineer; Architecture Engineer Lead | 96h | 96h | 6,240 | 6,240 |
| 25 | 1.7.2.3 | Generate description of events or messages that the system must produce | 3d | 2021-02-10 A | 2021-02-12 A | 24 | 100% |  |  |  | Architecture Engineer 1; Architecture Engineer 2; Design Engineer; Architecture Engineer Lead | 96h | 96h | 6,240 | 6,240 |
| 26 | 1.7.2.4 | Specify the data and formats of the data coming into and going out of the system | 4d | 2021-02-15 A | 2021-02-18 A | 25 | 100% |  |  |  | Architecture Engineer 1; Architecture Engineer 2; Design Engineer; Architecture Engineer Lead | 128h | 128h | 8,320 | 8,320 |
| 27 | 1.7.2.5 | Specify the ordering and timing relationships between incoming events or messages, and outgoing events or outputs | 4d | 2021-02-19 A | 2021-02-24 A | 26 | 100% |  |  |  | Architecture Engineer 1; Architecture Engineer 2; Design Engineer; Architecture Engineer Lead | 128h | 128h | 8,320 | 8,320 |
| 28 | 1.7.3 | Evaluate the system interface document | 1d | 2021-02-25 A | 2021-02-25 A | 27 | 100% |  |  |  | Architecture Engineer 1; Architecture Engineer 2; Design Engineer; Architecture Engineer Lead | 32h | 32h | 2,080 | 2,080 |

| ID | WBS | Task | Duration | Start | Finish | Predecessors | Complete | Resources | Work | Actual work | Cost | Actual cost |
| --- | --- | --- | --- | --- | --- | --- | --- | --- | --- | --- | --- | --- |
| 29 | 1.7.4 | **Create Architectural Design** | 9d | 2021-02-26 A | 2021-03-10 A |  | 100% |  | 216h | 216h | 12,960 | 12,960 |
| 30 | 1.7.4.1 | Decompose the systems into major components | 1d | 2021-02-26 A | 2021-02-26 A | 28 | 100% | Architecture Engineer 1; Architecture Engineer 2; Design Engineer | 24h | 24h | 1,440 | 1,440 |
| 31 | 1.7.4.2 | Allocate functional responsibilities to components | 1d | 2021-03-01 A | 2021-03-01 A | 30 | 100% | Architecture Engineer 1; Architecture Engineer 2; Design Engineer | 24h | 24h | 1,440 | 1,440 |
| 32 | 1.7.4.3 | Create component interfaces | 3d | 2021-03-02 A | 2021-03-04 A | 31 | 100% | Architecture Engineer 1; Architecture Engineer 2; Design Engineer | 72h | 72h | 4,320 | 4,320 |
| 33 | 1.7.4.4 | Determine component scaling and performance properties, resource consumption properties, reliability properties, etc. | 2d | 2021-03-05 A | 2021-03-08 A | 32 | 100% | Architecture Engineer 1; Architecture Engineer 2; Design Engineer | 48h | 48h | 2,880 | 2,880 |
| 34 | 1.7.4.5 | Outline communication and interaction between components | 2d | 2021-03-09 A | 2021-03-10 A | 33 | 100% | Architecture Engineer 1; Architecture Engineer 2; Design Engineer | 48h | 48h | 2,880 | 2,880 |
| 35 | 1.7.5 | Evaluate the architecture | 1d | 2021-03-11 A | 2021-03-11 A | 34 | 100% | Architecture Engineer Lead; Design Engineer; Technical Director | 24h | 24h | 1,680 | 1,680 |
| 36 | 1.7.6 | **Create detailed design** | 42d | 2021-03-12 A | 2021-05-10 A |  | 100% |  | 1352h | 1352h | 88,000 | 88,000 |
| 37 | 1.7.6.1 | Decompose the major system components into program units | 7d | 2021-03-12 A | 2021-03-22 A | 35 | 100% | Architecture Engineer 1; Architecture Engineer 2; Design Engineer; Architecture Engineer Lead | 224h | 224h | 14,560 | 14,560 |
| 38 | 1.7.6.2 | Server resources meetings | 2d | 2021-03-23 A | 2021-03-24 A | 37 | 100% | Architecture Engineer 1; Architecture Engineer 2; Design Engineer; Architecture Engineer Lead | 64h | 64h | 4,160 | 4,160 |
| 39 | 1.7.6.3 | Allocate functional responsibilities to units | 20d | 2021-03-25 A | 2021-04-21 A | 38 | 100% | Design Engineer; Architecture Engineer 1; Architecture Engineer 2; Architecture Engineer Lead | 640h | 640h | 41,600 | 41,600 |
| 40 | 1.7.6.4 | Create user interfaces | 3d | 2021-04-22 A | 2021-04-26 A | 39 | 100% | Design Engineer; Architecture Engineer 1; Architecture Engineer 2; Architecture Engineer Lead | 96h | 96h | 6,240 | 6,240 |
| 41 | 1.7.6.5 | Document unit states and state changes | 2d | 2021-04-27 A | 2021-04-28 A | 40 | 100% | Design Engineer; Architecture Engineer 1; Architecture Engineer 2; Architecture Engineer Lead | 64h | 64h | 4,160 | 4,160 |
| 42 | 1.7.6.6 | Map out data and control interaction between units | 3d | 2021-04-29 A | 2021-05-03 A | 41 | 100% | Design Engineer; Architecture Engineer 1; Architecture Engineer 2; Architecture Engineer Lead | 96h | 96h | 6,240 | 6,240 |
| 43 | 1.7.6.7 | Document data packaging and implementation, including issues of scope and visibility of program elements | 4d | 2021-05-04 A | 2021-05-07 A | 42 | 100% | Design Engineer; Architecture Engineer 1; Architecture Engineer 2; Architecture Engineer Lead | 128h | 128h | 8,320 | 8,320 |
| 44 | 1.7.6.8 | Decide on algorithms and data structures to be used | 1d | 2021-05-10 A | 2021-05-10 A | 43 | 100% | Design Engineer; Architecture Engineer 1; Architecture Engineer 2; Architecture Engineer Lead; IT Manager | 40h | 40h | 2,720 | 2,720 |
| 45 | 1.7.7 | Evaluate the detailed design | 3d | 2021-05-11 A | 2021-05-13 A | 44 | 100% | Design Engineer; Architecture Engineer 1; Architecture Engineer 2; Architecture Engineer Lead; IT Manager | 120h | 120h | 8,160 | 8,160 |
| 46 | 1.7.8 | Review the Software Design Description (meeting) | 1d | 2021-05-14 A | 2021-05-14 A | 45 | 100% | Architecture Engineer 1; Architecture Engineer 2; Architecture Engineer Lead; Design Engineer; IT Manager | 40h | 40h | 2,720 | 2,720 |
| 47 | 1.8 | **Coding** | 412d | 2021-05-17 A | 2022-12-13 A |  | 100% |  | 20808h | 20808h | 1,227,360 | 1,227,360 |
| 48 | 1.8.1 | **Back-end** | 412d | 2021-05-17 A | 2022-12-13 A |  | 100% |  | 17744h | 17744h | 1,035,680 | 1,035,680 |
| 49 | 1.8.1.1 | Iteration tasks, documentation tasks | 7d | 2021-05-17 A | 2021-05-25 A | 46 | 100% | Backend Developer 1; Backend Developer 3; Backend Development Lead | 168h | 168h | 9,800 | 9,800 |
| 50 | 1.8.1.2 | Iteration1: Initialize storage | 10d | 2021-05-26 A | 2021-06-08 A | 49 | 100% | Backend Developer 2; Backend Developer 4; Backend Development Lead; Database Developement Lead; IT Manager | 400h | 400h | 26,800 | 26,800 |
| 51 | 1.8.1.3 | Iteration1: Database creation on AWS cloud | 21d | 2021-06-09 A | 2021-07-07 A | 50 | 100% | Backend Developer 1; Backend Developer 3; Backend Development Lead; Database Developement Lead; Database Development Engineer 1; Database Development Engineer 2 | 1008h | 1008h | 63,000 | 63,000 |
| 52 | 1.8.1.4 | Iteration1: Develop DB integration to system | 20d | 2021-07-08 A | 2021-08-04 A | 51 | 100% | Backend Developer 2; Backend Development Lead; Backend Developer 4; Database Developement Lead; Database Development Engineer 1; Database Development Engineer 2; IT Manager | 1120h | 1120h | 72,800 | 72,800 |
| 53 | 1.8.1.5 | Iteration1: Develop data collection techniques | 20d | 2021-08-05 A | 2021-09-01 A | 52 | 100% | Backend Developer 2; Backend Developer 4; Backend Development Lead; Database Developement Lead; Database Development Engineer 1; Database Development Engineer 2 | 960h | 960h | 60,000 | 60,000 |
| 54 | 1.8.1.6 | Iteration1: Develop data transfer to location tools | 15d | 2021-09-02 A | 2021-09-22 A | 53 | 100% | Backend Developer 1; Backend Developer 3; Backend Development Lead; Database Developement Lead; Database Development Engineer 1; Database Development Engineer 2 | 720h | 720h | 45,000 | 45,000 |
| 55 | 1.8.1.7 | Iteration2: Classification category creation | 10d | 2021-09-23 A | 2021-10-06 A | 54 | 100% | Backend Developer 2; Backend Developer 4; Backend Development Lead | 240h | 240h | 14,000 | 14,000 |
| 56 | 1.8.1.8 | Iteration2: Create Trainer Models using Python and TensorFlow libraries | 10d | 2021-10-07 A | 2021-10-20 A | 55 | 100% | Backend Developer 3; Backend Developer 1; Backend Development Lead | 240h | 240h | 14,000 | 14,000 |
| 57 | 1.8.1.9 | Iteration2: Apply trainer models | 7d | 2021-10-21 A | 2021-10-29 A | 56 | 100% | Backend Developer 2; Backend Developer 4; Backend Development Lead | 168h | 168h | 9,800 | 9,800 |
| 58 | 1.8.1.10 | Itertation2: Develop detected vulnurabiltiy database, store known/detected vulnerabilities | 30d | 2021-11-01 A | 2021-12-10 A | 57 | 100% | Backend Developer 1; Backend Developer 3; Backend Development Lead | 720h | 720h | 42,000 | 42,000 |
| 59 | 1.8.1.11 | Iteration3: Create API and documentation | 15d | 2021-12-13 A | 2021-12-31 A | 58 | 100% | Backend Developer 1; Backend Developer 3; Backend Development Lead | 360h | 360h | 21,000 | 21,000 |
| 60 | 1.8.1.12 | Iteration3: Develop network analyzer tool | 21d | 2022-01-03 A | 2022-01-31 A | 59 | 100% | Backend Developer 2; Backend Developer 4; Backend Development Lead; Database Developement Lead; Database Development Engineer 1; Database Development Engineer 2 | 1008h | 1008h | 63,000 | 63,000 |
| 61 | 1.8.1.13 | Iteration4: Develop stress testing and performance tests | 30d | 2022-02-01 A | 2022-03-14 A | 60 | 100% | Backend Developer 1; Backend Developer 3; Backend Development Lead | 720h | 720h | 42,000 | 42,000 |
| 62 | 1.8.1.14 | Iteration4: Develop dead link webcrawler | 15d | 2022-03-15 A | 2022-04-04 A | 61 | 100% | Backend Developer 2; Backend Developer 4; Backend Development Lead | 360h | 360h | 21,000 | 21,000 |
| 63 | 1.8.1.15 | Iteration5: Develop link evaluator tool | 21d | 2022-04-05 A | 2022-05-03 A | 62 | 100% | Backend Developer 2; Backend Developer 4; Backend Development Lead | 504h | 504h | 29,400 | 29,400 |
| 64 | 1.8.1.16 | Iteration5: Develop server ping response tool | 10d | 2022-05-04 A | 2022-05-17 A | 63 | 100% | Backend Developer 2; Backend Developer 4; Backend Development Lead; Database Developement Lead; Database Development Engineer 1; Database Development Engineer 2 | 480h | 480h | 30,000 | 30,000 |
| 65 | 1.8.1.17 | Iteration5: Develop infiltration tool | 36d | 2022-05-18 A | 2022-07-06 A | 64 | 100% | Backend Developer 1; Backend Developer 3; Backend Development Lead; Security Engineer 1; Security Engineer 2; Security Engineer Lead; Security Engineer 3; Security Engineer 4 | 1920h | 1920h | 104,400 | 104,400 |
| 66 | 1.8.1.18 | Iteration5: Develop Automated security response tool | 30d | 2022-07-07 A | 2022-08-17 A | 65 | 100% | Backend Developer 1; Backend Developer 3; Backend Development Lead; Security Engineer 3; Security Engineer 4; Security Engineer Lead; Security Engineer 1; Security Engineer 2 | 1920h | 1920h | 104,400 | 104,400 |
| 67 | 1.8.1.19 | Iteration6: Develop error diagnosis system | 40d | 2022-08-18 A | 2022-10-12 A | 66 | 100% | Backend Developer 2; Backend Developer 4; Backend Development Lead; Security Engineer 1; Security Engineer 2; Security Engineer 3; Security Engineer 4; Security Engineer Lead | 2560h | 2560h | 139,200 | 139,200 |
| 68 | 1.8.1.20 | Iteration7: Develop vulnerability detection tool | 30d | 2022-10-13 A | 2022-11-23 A | 67 | 100% | Backend Developer 2; Backend Developer 4; Backend Development Lead; Security Engineer 1; Security Engineer 2; Security Engineer Lead | 1440h | 1440h | 80,400 | 80,400 |
| 69 | 1.8.1.21 | Iteration8: quality assurance meeting and coding review | 7d | 2022-11-24 A | 2022-12-02 A | 68 | 100% | Backend Developer 1; Backend Developer 3; Backend Development Lead; Technical Director; Security Engineer Lead; Backend Developer 2; Backend Developer 4; Business Analyst | 448h | 448h | 26,600 | 26,600 |
| 70 | 1.8.1.22 | Iteration8: Backend - Final Review | 7d | 2022-12-05 A | 2022-12-13 A | 69 | 100% | Backend Developer 1; Backend Developer 3; Backend Development Lead; Technical Director; Security Engineer Lead | 280h | 280h | 17,080 | 17,080 |

| ID | WBS | Task | Duration | Start | Finish | Predecessors | Complete | Total slack | Resources | Work | Actual work | Cost | Actual cost |
| --- | --- | --- | --- | --- | --- | --- | --- | --- | --- | --- | --- | --- | --- |
| 71 | 1.8.2 | **Front-end** | 116d | 2021-05-17 A | 2021-10-25 A |  | 100% |  |  | 3064h | 3064h | 191,680 | 191,680 |
| 72 | 1.8.2.1 | Program Dashboard - Link Scan Data Analysis | 1d | 2021-05-17 A | 2021-05-17 A | 46 | 100% |  | Frontend Development Lead; Design Engineer; Frontend Developer 3; Frontend Developer 4 | 32h | 32h | 2,000 | 2,000 |
| 73 | 1.8.2.2 | Program Dashboard -Link architecture scan (title tags, meta descriptions, URL structure and image alt tags) | 5d | 2021-05-18 A | 2021-06-30 A | 72 | 100% |  | Frontend Developer 1; Frontend Developer 2; Frontend Development Lead; Design Engineer | 160h | 160h | 10,000 | 10,000 |
| 74 | 1.8.2.3 | Program Dashboard - Rerouting capability checks | 3d | 2021-07-01 A | 2021-07-05 A | 73 | 100% |  | Frontend Developer 3; Frontend Developer 4; Frontend Development Lead; Design Engineer | 96h | 96h | 6,000 | 6,000 |
| 75 | 1.8.2.4 | Runtime Dashboard - Button Sync Tester | 2d | 2021-07-06 A | 2021-07-07 A | 74 | 100% |  | Frontend Developer 1; Frontend Developer 2; Frontend Development Lead; Design Engineer | 64h | 64h | 4,000 | 4,000 |
| 76 | 1.8.2.5 | Runtime Dashboard - UI Response Tester | 3d | 2021-07-08 A | 2021-07-12 A | 75 | 100% |  | Frontend Developer 1; Frontend Developer 2; Frontend Development Lead; Design Engineer; Frontend Developer 3; Frontend Developer 4; Technical Director | 168h | 168h | 10,560 | 10,560 |
| 77 | 1.8.2.6 | Runtime Dashboard - Test Menu operations and workflow, display errors | 9d | 2021-07-13 A | 2021-07-23 A | 76 | 100% |  | Frontend Development Lead; Design Engineer; Frontend Developer 3; Frontend Developer 4 | 288h | 288h | 18,000 | 18,000 |
| 78 | 1.8.2.7 | Runtime Dashboard - Run Intended Design - Client Display comparison checks, view results | 9d | 2021-07-26 A | 2021-08-05 A | 77 | 100% |  | Frontend Developer 1; Frontend Developer 2; Frontend Development Lead; Design Engineer | 288h | 288h | 18,000 | 18,000 |
| 79 | 1.8.2.8 | Runtime Dashboard - View CRUD operations and invalid inputs results | 8d | 2021-08-06 A | 2021-08-17 A | 78 | 100% |  | Frontend Developer 3; Frontend Developer 4; Frontend Development Lead; Design Engineer | 256h | 256h | 16,000 | 16,000 |
| 80 | 1.8.2.9 | Post-runtime Dashboard - Perform boundary value analysis on front-end forms | 6d | 2021-08-18 A | 2021-08-25 A | 79 | 100% |  | Frontend Developer 1; Frontend Developer 2; Frontend Development Lead; Design Engineer | 192h | 192h | 12,000 | 12,000 |
| 81 | 1.8.2.10 | Post-runtime Dashboard - Tests and displays website compatibility with multiple browsers and operating systems, then identifies UI discrepancies between them | 2d | 2021-08-26 A | 2021-08-27 A | 80 | 100% |  | Frontend Developer 1; Frontend Developer 2; Frontend Development Lead; Design Engineer; Frontend Developer 3; Frontend Developer 4; Technical Director | 112h | 112h | 7,040 | 7,040 |
| 82 | 1.8.2.11 | Post-runtime Dashboard - SEO Data Analysis review | 6d | 2021-08-30 A | 2021-09-06 A | 81 | 100% |  | Frontend Development Lead; Design Engineer; Frontend Developer 3; Frontend Developer 4 | 192h | 192h | 12,000 | 12,000 |
| 83 | 1.8.2.12 | Post-runtime Dashboard - Display Performance Analysis System | 9d | 2021-09-07 A | 2021-09-17 A | 82 | 100% |  | Frontend Developer 1; Frontend Developer 2; Frontend Development Lead; Design Engineer | 288h | 288h | 18,000 | 18,000 |
| 84 | 1.8.2.13 | Post-runtime Dashboard - VPN ping response rates | 3d | 2021-09-20 A | 2021-09-22 A | 83 | 100% |  | Frontend Developer 3; Frontend Developer 4; Frontend Development Lead; Design Engineer | 96h | 96h | 6,000 | 6,000 |
| 85 | 1.8.2.14 | Post-runtime Dashboard - Payment gateway security checks | 2d | 2021-09-23 A | 2021-09-24 A | 84 | 100% |  | Frontend Developer 1; Frontend Developer 2; Frontend Development Lead; Design Engineer | 64h | 64h | 4,000 | 4,000 |
| 86 | 1.8.2.15 | Post-runtime Dashboard - Display outputs of Ethical Hacking checks | 4d | 2021-09-27 A | 2021-09-30 A | 85 | 100% |  | Frontend Developer 1; Frontend Developer 2; Frontend Development Lead; Design Engineer; Frontend Developer 3; Frontend Developer 4; Technical Director | 224h | 224h | 14,080 | 14,080 |
| 87 | 1.8.2.16 | Post-runtime Dashboard - Perform logic checks to ensure all required features are implemented by the website | 5d | 2021-10-01 A | 2021-10-07 A | 86 | 100% |  | Frontend Development Lead; Design Engineer; Frontend Developer 3; Frontend Developer 4 | 160h | 160h | 10,000 | 10,000 |
| 88 | 1.8.2.17 | Post-runtime Dashboard - Database, API, and other server connectivity and implementation checks | 12d | 2021-10-08 A | 2021-10-25 A | 87 | 100% |  | Frontend Developer 1; Frontend Developer 2; Frontend Development Lead; Design Engineer | 384h | 384h | 24,000 | 24,000 |
| 89 | 1.9 | **Testing** | 86d | 2022-12-14 | 2023-04-12 |  |  | 0d |  | 2272h |  | 119,040 |  |
| 90 | 1.9.1 | Create test cases for relevant tasks | 10d | 2022-12-14 | 2022-12-27 | 70 |  | 0d | Testing Engineer 1; Testing Engineer 2; Testing Engineer 3; Testing Engineer 4; Testing Engineer Lead | 400h |  | 20,800 |  |
| 91 | 1.9.2 | Environment stablization testing | 7d | 2022-12-28 | 2023-01-05 | 90 |  | 0d | Testing Engineer 3; Testing Engineer 4 | 112h |  | 5,600 |  |
| 92 | 1.9.3 | Test CRUD operations on database initiated by API | 2d | 2023-01-06 | 2023-01-09 | 91 |  | 0d | Testing Engineer 1; Testing Engineer 2; Testing Engineer 3; Testing Engineer 4; Testing Engineer Lead | 80h |  | 4,160 |  |
| 93 | 1.9.4 | Test inputs and datatypes on database fields | 1d | 2023-01-10 | 2023-01-10 | 92 |  | 0d | Testing Engineer 1; Testing Engineer 2; Testing Engineer 3; Testing Engineer 4; Testing Engineer Lead | 40h |  | 2,080 |  |
| 94 | 1.9.5 | Check time average time for database lookup | 1d | 2023-01-11 | 2023-01-11 | 93 |  | 0d | Testing Engineer 1; Testing Engineer 2; Testing Engineer 3; Testing Engineer 4; Testing Engineer Lead | 40h |  | 2,080 |  |
| 95 | 1.9.6 | Test validity of AI model | 2d | 2023-01-12 | 2023-01-13 | 94 |  | 0d | Testing Engineer 3; Testing Engineer Lead | 32h |  | 1,760 |  |
| 96 | 1.9.7 | Test Reliability of AI model | 2d | 2023-01-16 | 2023-01-17 | 95 |  | 127d | Testing Engineer Lead; Testing Engineer 4 | 32h |  | 1,760 |  |
| 97 | 1.9.8 | Test functionality of fronted web components | 3d | 2023-01-16 | 2023-01-18 | 95 |  | 0d | Testing Engineer 3 | 24h |  | 1,200 |  |
| 98 | 1.9.9 | Test stress testing and performance suite | 3d | 2023-01-19 | 2023-01-23 | 97 |  | 0d | Testing Engineer 1; Testing Engineer 2 | 48h |  | 2,400 |  |
| 99 | 1.9.10 | Test dead link web crawler | 3d | 2023-01-24 | 2023-01-26 | 98 |  | 0d | Testing Engineer 1; Testing Engineer 2; Testing Engineer 3; Testing Engineer 4; Testing Engineer Lead | 120h |  | 6,240 |  |
| 100 | 1.9.11 | Check time average time for database lookup | 1d | 2023-01-26 | 2023-01-27 | 99 |  | 0d | Testing Engineer 1; Database Development Engineer 1 | 8h |  | 400 |  |
| 101 | 1.9.12 | Test link evaluator | 2d | 2023-01-30 | 2023-01-31 | 100 |  | 0d | Testing Engineer 2; Testing Engineer 3 | 32h |  | 1,600 |  |
| 102 | 1.9.13 | Set-up internal network and test network analyzer tool | 2d | 2023-02-01 | 2023-02-02 | 101 |  | 0d | Testing Engineer 3; Testing Engineer 4 | 32h |  | 1,600 |  |
| 103 | 1.9.14 | Test network server ping response tool | 1d | 2023-02-02 | 2023-02-07 | 102 |  | 0d | Testing Engineer 1; Testing Engineer 2; Testing Engineer 3; Testing Engineer 4; Testing Engineer Lead; Database Developement Lead; Database Development Engineer 1; Database Development Engineer 2 | 40h |  | 2,080 |  |
| 104 | 1.9.15 | Test infiltration tool | 3d | 2023-02-08 | 2023-02-10 | 103 |  | 0d | Testing Engineer 1; Testing Engineer 4 | 48h |  | 2,400 |  |
| 105 | 1.9.16 | Test vulnerability detection tool | 3d | 2023-02-13 | 2023-02-15 | 104 |  | 0d | Testing Engineer 1; Testing Engineer 2; Testing Engineer 3; Testing Engineer 4; Testing Engineer Lead | 120h |  | 6,240 |  |
| 106 | 1.9.17 | Test automated security response tool | 3d | 2023-02-16 | 2023-02-20 | 105 |  | 0d | Testing Engineer 1; Testing Engineer 2; Testing Engineer 3; Testing Engineer 4; Testing Engineer Lead | 120h |  | 6,240 |  |
| 107 | 1.9.18 | Defects fixing | 28d | 2023-02-21 | 2023-03-30 | 106 |  | 0d | Testing Engineer 1; Testing Engineer 2; Testing Engineer Lead | 672h |  | 35,840 |  |
| 108 | 1.9.19 | End-to-end testing | 5d | 2023-03-31 | 2023-04-06 | 107 |  | 0d | Testing Engineer 2; Testing Engineer 3 | 80h |  | 4,000 |  |
| 109 | 1.9.20 | Final Review | 4d | 2023-04-07 | 2023-04-12 | 108 |  | 0d | Testing Engineer 1; Testing Engineer 2; Testing Engineer 3; Testing Engineer 4; Testing Engineer Lead; Technical Director | 192h |  | 10,560 |  |

| ID | WBS | Task | Duration | Start | Finish | Predecessors | Total slack | Resources | Work | Cost |
| --- | --- | --- | --- | --- | --- | --- | --- | --- | --- | --- |
| 110 | 1.10 | **Deployment** | 66d | 2023-04-13 | 2023-07-13 |  | 0d |  | 2038.67h | 130,440 |
| 111 | 1.10.1 | Review project status | 6d | 2023-04-13 | 2023-04-20 | 109 | 0d | Deployment Engineer Lead; Business Analyst; Project Sponsor/Manager 2; Backend Development Lead; Frontend Development Lead; Testing Engineer Lead | 208h | 13,440 |
| 112 | 1.10.2 | Project completion meeting | 2d | 2023-04-21 | 2023-04-24 | 111 | 0d | Deployment Engineer Lead; Business Analyst; Technical Director; Project Sponsor/Manager 2 | 64h | 4,480 |
| 113 | 1.10.3 | Draft Project completion document | 3d | 2023-04-25 | 2023-04-27 | 112 | 0d | Deployment Developer 1; Deployment Developer 2; Deployment Developer 3; Deployment Developer 4; Deployment Engineer Lead | 120h | 6,720 |
| 114 | 1.10.4 | Review Project completion document | 3d | 2023-04-28 | 2023-05-02 | 113 | 0d | Deployment Engineer Lead; Project Sponsor/Manager 2; Technical Director | 54.67h | 3,960 |
| 115 | 1.10.5 | Check fulfillment of scope | 3d | 2023-04-21 | 2023-04-25 | 111 | 5d | Requirements Engineer 1; Testing Engineer Lead | 48h | 2,640 |
| 116 | 1.10.6 | Draft application description docmentation | 5d | 2023-05-03 | 2023-05-09 | 114, 115 | 0d | Deployment Developer 1; Deployment Developer 2; Deployment Developer 3; Deployment Developer 4; Deployment Engineer Lead | 200h | 11,200 |
| 117 | 1.10.7 | Application presentation to stakeholders | 5d | 2023-05-10 | 2023-05-16 | 116 | 0d | Deployment Engineer Lead; Technical Director | 80h | 5,200 |
| 118 | 1.10.8 | Draft deployment plan | 2d | 2023-05-17 | 2023-05-18 | 117 | 0d | Deployment Engineer Lead; Project Sponsor/Manager 2 | 32h | 2,400 |
| 119 | 1.10.9 | Review deployment plan with sponsor | 1d | 2023-05-19 | 2023-05-19 | 118 | 0d | Deployment Engineer Lead; Project Sponsor/Manager 2 | 16h | 1,200 |
| 120 | 1.10.10 | Support plan meeting | 3d | 2023-05-22 | 2023-05-24 | 119 | 0d | Deployment Developer 2; Technical Director; Deployment Developer 1; IT Manager | 96h | 6,240 |
| 121 | 1.10.11 | Transfer source code to customer | 2d | 2023-05-25 | 2023-05-26 | 120 | 0d | Deployment Engineer Lead; Technical Director | 32h | 2,080 |
| 122 | 1.10.12 | Integrate Application with AWS | 3d | 2023-05-29 | 2023-05-31 | 121 | 0d | Deployment Developer 3; Deployment Developer 4; Deployment Engineer Lead; IT Manager | 96h | 6,000 |
| 123 | 1.10.13 | Train application users | 14d | 2023-06-01 | 2023-06-20 | 122 | 17d | Deployment Developer 1; Deployment Developer 2; IT Manager | 336h | 21,280 |
| 124 | 1.10.14 | Monitor application use in AWS | 14d | 2023-06-01 | 2023-06-20 | 122 | 0d | Deployment Developer 3; Deployment Developer 4 | 224h | 12,320 |
| 125 | 1.10.15 | QA customer meeting | 3d | 2023-06-21 | 2023-06-23 | 124 | 0d | Deployment Engineer Lead; IT Manager; Project Sponsor/Manager 2; Technical Director | 96h | 7,200 |
| 126 | 1.10.16 | Transfer ownership to customer | 3d | 2023-06-26 | 2023-06-28 | 125 | 0d | Deployment Engineer Lead; Technical Director; Business Analyst; Project Sponsor/Manager 2 | 96h | 6,720 |
| 127 | 1.10.17 | Post deployment review | 4d | 2023-06-29 | 2023-07-04 | 126 | 0d | Deployment Engineer Lead; Technical Director; Business Analyst; Project Sponsor/Manager 2 | 128h | 8,960 |
| 128 | 1.10.18 | Disband/reassign resources | 7d | 2023-07-05 | 2023-07-13 | 127 | 0d | Deployment Engineer Lead; Project Sponsor/Manager 2 | 112h | 8,400 |
